# Project Plan

Schedule from MS Project, 2023-04-03 to 2023-07-10.

## Calendars

- Standard: Mon-Fri 08:00-12:00, 13:00-17:00; Sat-Sun off.

## Schedule

| ID | WBS | Task | Duration | Start | Finish | Predecessors | Baseline start | Baseline finish | Baseline duration | Total slack | Free slack |
| --- | --- | --- | --- | --- | --- | --- | --- | --- | --- | --- | --- |
| 1 | 1 | **Planning BI Solution** | 41d | 2023-04-03 | 2023-05-29 |  | 2023-04-24 | 2023-06-14 | 38d | 0d |  |
| 2 | 1.1 | Project Scope | 25d | 2023-04-03 | 2023-05-05 |  | 2023-04-24 | 2023-05-19 | 20d | 0d |  |
| 3 | 1.2 | Required BI Software | 2d | 2023-05-08 | 2023-05-09 | 2 | 2023-04-24 | 2023-05-19 | 20d | 13d | 0d |
| 4 | 1.3 | **Planning SQL Server Business Intelligence Infrastructure** | 1d | 2023-05-10 | 2023-05-10 | 2, 3 | 2023-05-22 | 2023-05-22 | 1d | 13d |  |
| 5 | 1.3.1 | BI Topology | 1d | 2023-05-10 | 2023-05-10 |  | 2023-05-22 | 2023-05-22 | 1d | 13d |  |
| 6 | 1.3.2 | Planning Data Warehouse Hardware | 1d | 2023-05-10 | 2023-05-10 |  | 2023-05-22 | 2023-05-22 | 1d | 13d |  |
| 7 | 1.4 | **Designing Data Warehouse** | 11d | 2023-05-08 | 2023-05-22 |  | 2023-05-23 | 2023-06-07 | 12d | 0d |  |
| 8 | 1.4.1 | **Designing Data Warehouse Logical Schema** | 9d | 2023-05-08 | 2023-05-18 | 2 | 2023-05-23 | 2023-06-05 | 10d | 0d |  |
| 9 | 1.4.1.1 | Identify business processes | 1d | 2023-05-08 | 2023-05-08 |  | 2023-05-23 | 2023-05-24 | 2d | 0d |  |
| 10 | 1.4.1.2 | Designing Dimension Models and Data Warehouse Tables | 1d | 2023-05-09 | 2023-05-09 | 9 | 2023-05-25 | 2023-05-26 | 2d | 7d |  |
| 11 | 1.4.1.3 | Data source profiling | 5d | 2023-05-09 | 2023-05-15 | 9 | 2023-05-25 | 2023-05-31 | 5d | 0d |  |
| 12 | 1.4.1.4 | Dimension | 3d | 2023-05-16 | 2023-05-18 | 11 | 2023-06-01 | 2023-06-05 | 3d | 0d |  |
| 13 | 1.4.1.5 | Fact | 3d | 2023-05-16 | 2023-05-18 | 11 | 2023-06-01 | 2023-06-05 | 3d | 0d |  |
| 14 | 1.4.2 | **Designing Data Warehouse Physical Implementation** | 2d | 2023-05-19 | 2023-05-22 | 8 | 2023-06-06 | 2023-06-07 | 2d | 2d | 0d |
| 15 | 1.4.2.1 | Designing File Storage | 1d | 2023-05-19 | 2023-05-19 |  | 2023-06-06 | 2023-06-06 | 1d | 2d | 0d |
| 16 | 1.4.2.2 | Partitioning | 1d | 2023-05-22 | 2023-05-22 | 15 | 2023-06-07 | 2023-06-07 | 1d | 2d |  |
| 17 | 1.4.2.3 | Indexes | 1d | 2023-05-22 | 2023-05-22 | 15 | 2023-06-07 | 2023-06-07 | 1d | 2d |  |
| 18 | 1.4.2.4 | Compression | 1d | 2023-05-22 | 2023-05-22 | 15 | 2023-06-07 | 2023-06-07 | 1d | 2d |  |
| 19 | 1.4.2.5 | Views | 1d | 2023-05-22 | 2023-05-22 | 15 | 2023-06-07 | 2023-06-07 | 1d | 2d |  |
| 20 | 1.5 | **Designing ETL Solution** | 5d | 2023-05-19 | 2023-05-25 |  | 2023-06-08 | 2023-06-14 | 5d | 2d |  |
| 21 | 1.5.1 | Designing ETL for Dimensions | 2d | 2023-05-19 | 2023-05-22 | 8 |  |  |  | 5d |  |
| 22 | 1.5.2 | Designing ETL for Facts | 3d | 2023-05-23 | 2023-05-25 | 14 |  |  |  | 2d |  |
| 23 | 1.6 | **Planning BI Delivery Solution** | 7d | 2023-05-19 | 2023-05-29 | 8 | 2023-06-06 | 2023-06-12 | 5d | 0d |  |
| 24 | 1.6.1 | Reporting Requirements | 7d | 2023-05-19 | 2023-05-29 |  | 2023-06-06 | 2023-06-12 | 5d | 0d |  |

| ID | WBS | Task | Type | Duration | Start | Finish | Predecessors | Baseline start | Baseline finish | Baseline duration | Total slack |
| --- | --- | --- | --- | --- | --- | --- | --- | --- | --- | --- | --- |
| 25 | 2 | **Implementing BI Solution** |  | 20d | 2023-05-30 | 2023-06-26 | 1 | 2023-06-15 | 2023-07-26 | 30d | 0d |
| 26 | 2.1 | **Implementing Data Warehouse** |  | 5d | 2023-05-30 | 2023-06-05 |  | 2023-06-15 | 2023-06-21 | 5d | 0d |
| 27 | 2.1.1 | Implementing Data Warehouse Logical Schema |  | 5d | 2023-05-30 | 2023-06-05 | 8 | 2023-06-15 | 2023-06-21 | 5d | 0d |
| 28 | 2.1.2 | Implementing Data Warehouse Physical Implementation |  | 5d | 2023-05-30 | 2023-06-05 | 14 | 2023-06-15 | 2023-06-21 | 5d | 0d |
| 29 | 2.2 | **Implementing ETL** |  | 15d | 2023-06-06 | 2023-06-26 | 20, 26 | 2023-06-15 | 2023-07-05 | 15d | 0d |
| 30 | 2.2.1 | Implementing Integration Packages |  | 15d | 2023-06-06 | 2023-06-26 |  | 2023-06-15 | 2023-07-05 | 15d | 0d |
| 31 | 2.2.2 | Implementing DQS |  | 15d | 2023-06-06 | 2023-06-26 |  | 2023-06-15 | 2023-07-05 | 15d | 0d |
| 32 | 2.2.3 | Implementing MDS |  | 15d | 2023-06-06 | 2023-06-26 |  | 2023-06-15 | 2023-07-05 | 15d | 0d |
| 33 | 2.3 | Implementing BI delivery solution |  | 15d | 2023-06-06 | 2023-06-26 | 26 | 2023-07-06 | 2023-07-26 | 15d | 0d |
| 34 | 3 | Testing |  | 10d | 2023-06-27 | 2023-07-10 | 25 |  |  |  | 0d |
| 35 | 4 | **Trainings** |  | 5d | 2023-06-27 | 2023-07-03 |  |  |  |  | 5d |
| 36 | 4.1 | Business Users |  | 5d | 2023-06-27 | 2023-07-03 | 33 |  |  |  | 5d |
| 37 | 4.2 | Data Stewards |  | 5d | 2023-06-27 | 2023-07-03 | 31, 32 |  |  |  | 5d |
| 38 | 5 | RELEASE 1 | milestone | 0d | 2023-07-10 | 2023-07-10 | 34 | 2023-07-26 | 2023-07-26 | 0d | 0d |
